# Конференция «Новые информационные технологии в промышленности»

Schedule from MS Project, 2018-11-01 to 2018-12-28, status date 2018-11-01, costs in ₽, A marks actual dates.
«Проведение конференции, посвященной использованию новых информационных технологий в промышленности. Конференция должна привлечь внимание новых потенциальных заказчиков к услугам фирмы»
В«Р¦РµРЅС‚СЂ РќРѕРІС‹С… Р�РЅС„РѕСЂРјР°С†РёРѕРЅРЅС‹С… РўРµС…РЅРѕР»РѕРіРёР№В»
«Место проведения – актовый зал Государственного Университета г. N. Конференция будет проводится 10–11 ноября 2018 г.»
«Место проведения актовый зал Государственного Университета г. N. Конференция будет проводится 1011 ноября 2018 г.»

## Calendars

- Стандартный: Mon-Fri 09:00-13:00, 14:00-18:00; Sat-Sun off. Exceptions (off unless hours are given): 2018-11-04 (День народного единства), 2018-11-06 (День конституции Татарстана).

## Resources

| Resource | Group | Unit | Rate | Cost per use |
| --- | --- | --- | --- | --- |
| Иванов П.А. | Менеджеры |  | 25 |  |
| Самохвалов М.К. | Менеджеры |  | 25 |  |
| Васильев А.П. | Менеджеры |  | 25 |  |
| Маринина В.И. | Менеджеры |  | 25 |  |
| Федорова М.П. | Менеджеры |  | 25 |  |
| Петров М.П. | Инженеры |  | 30 |  |
| Прохоров В.Я. | Монтажники |  | 20 |  |
| Прохоренко М.И. | Секретари |  | 20 |  |
| Иволгин А.М. | Водители |  | 25 |  |
| Кафе "Росинка" | Подрядчики |  |  | 10000 |
| Фирма "Экраны и проекторы" | Подрядчики |  |  |  |
| Кабель |  | М |  |  |
| Бумага |  | Пачка |  |  |
| Конверт |  | Шт |  |  |

## Schedule

| ID | WBS | Task | Type | Duration | Start | Finish | Predecessors | Complete | Remaining | Baseline start | Baseline finish | Baseline duration | Resources | Work | Actual work | Cost | Baseline cost | Actual cost |
| --- | --- | --- | --- | --- | --- | --- | --- | --- | --- | --- | --- | --- | --- | --- | --- | --- | --- | --- |
| 1 | 1 | **Разрабока концепции конференции** |  | 8.5d | 2018-11-01 A | 2018-11-14 A |  | 100% |  | 2018-11-01 | 2018-11-14 | 8.5d |  | 64h | 64h | 1,600 | 1,600 | 1,600 |
| 2 | 1.1 | Выработка предложений по темам докладов и участникам | manual | 2d | 2018-11-01 A | 2018-11-02 A |  | 100% |  | 2018-11-01 | 2018-11-02 | 2d | Васильев А.П. [25%]; Маринина В.И. [25%]; Самохвалов М.К. [25%]; Федорова М.П. [25%] | 16h | 16h | 400 | 400 | 400 |
| 3 | 1.2 | Разработка начального расписания докладов | manual | 1d | 2018-11-05 A | 2018-11-05 A | 2 | 100% |  | 2018-11-05 | 2018-11-05 | 1d | Васильев А.П. [25%]; Маринина В.И. [25%]; Самохвалов М.К. [25%]; Федорова М.П. [25%] | 8h | 8h | 200 | 200 | 200 |
| 4 | 1.3 | Обсуждение предложений | manual | 0.5d | 2018-11-07 A | 2018-11-07 A | 3 | 100% |  | 2018-11-07 | 2018-11-07 | 0.5d |  |  |  |  |  |  |
| 5 | 1.4 | Создание окончательного списка докладов и участников | manual | 1d | 2018-11-07 A | 2018-11-08 A | 4 | 100% |  | 2018-11-07 | 2018-11-08 | 1d | Самохвалов М.К. | 8h | 8h | 200 | 200 | 200 |
| 6 | 1.5 | Приглашение докладчиков из других организаций | manual | 3d | 2018-11-08 A | 2018-11-13 A | 5 | 100% |  | 2018-11-08 | 2018-11-13 | 3d | Маринина В.И. [50%]; Федорова М.П. [50%] | 24h | 24h | 600 | 600 | 600 |
| 7 | 1.6 | Создание окончательного варианта расписания | manual | 1d | 2018-11-13 A | 2018-11-14 A | 6 | 100% |  | 2018-11-13 | 2018-11-14 | 1d | Самохвалов М.К. | 8h | 8h | 200 | 200 | 200 |
| 8 | 2 | **Проведение рекламной компании** |  | 9d | 2018-11-14 A | 2018-11-24 |  | 14% | 7.76d | 2018-11-15 | 2018-11-28 | 10d |  | 80h | 11.04h | 24,000 | 24,000 | 276 |
| 9 | 2.1 | Организация почтовой рассылки | manual | 3d | 2018-11-14 A | 2018-11-17 | 7 | 46% | 1.62d | 2018-11-14 | 2018-11-19 | 3d | Маринина В.И. [50%]; Федорова М.П. [50%] | 24h | 11.04h | 600 | 600 | 276 |
| 10 | 2.2 | Организация рекламы в средствах массовой информации и Интернет | manual | 3d | 2018-11-19 | 2018-11-22 | 9 |  |  | 2018-11-19 | 2018-11-22 | 3d | Маринина В.И. [50%]; Федорова М.П. [50%] | 24h |  | 20,600 | 20,600 |  |
| 11 | 2.3 | Регистрация участников в конференции | manual | 1d | 2018-11-22 | 2018-11-23 | 10 |  |  | 2018-11-22 | 2018-11-23 | 1d | Маринина В.И. [50%]; Федорова М.П. [50%] | 8h |  | 200 | 200 |  |
| 12 | 2.4 | Рассылка приглашений | manual | 3d | 2018-11-23 | 2018-11-28 | 11 |  |  | 2018-11-23 | 2018-11-28 | 3d | Бумага [5 Пачка]; Конверт [500 Шт]; Маринина В.И. [50%]; Федорова М.П. [50%] | 24h |  | 2,600 | 2,600 |  |
| 13 | 3 | **Создание информационных материалов** |  | 2d | 2018-11-29 | 2018-11-30 |  |  |  | 2018-11-29 | 2018-11-30 | 2d |  | 16h |  | 5,400 | 5,400 |  |
| 14 | 3.1 | Материалы от докладчиков получены | milestone, manual | 0h | 2018-11-28 | 2018-11-28 | 12 |  |  | 2018-11-28 | 2018-11-28 | 0h |  |  |  |  |  |  |
| 15 | 3.2 | Разработка информационной брошюры | manual | 1d | 2018-11-28 | 2018-11-29 | 14 |  |  | 2018-11-28 | 2018-11-29 | 1d | Иванов П.А. | 8h |  | 200 | 200 |  |
| 16 | 3.3 | Разработка анкет участников конференции | manual | 1d | 2018-11-29 | 2018-11-30 | 15 |  |  | 2018-11-29 | 2018-11-30 | 1d | Иванов П.А. | 8h |  | 200 | 200 |  |
| 17 | 4 | **Договор об аренде актового зала** |  | 2.5d | 2018-12-01 | 2018-12-04 |  |  |  | 2018-12-01 | 2018-12-04 | 2.5d |  | 12h |  | 10,300 | 10,300 |  |
| 18 | 4.1 | Разработка своего варианта договора с Университетом | manual | 0.5d | 2018-11-30 | 2018-11-30 | 16 |  |  | 2018-11-30 | 2018-11-30 | 0.5d | Маринина В.И. | 4h |  | 100 | 100 |  |
| 19 | 4.2 | Согласование договора с представителями Университета | manual | 1d | 2018-11-30 | 2018-12-03 | 18 |  |  | 2018-11-30 | 2018-12-03 | 1d | Маринина В.И. | 8h |  | 200 | 200 |  |
| 20 | 4.3 | Договор подписан | milestone, manual | 0h | 2018-12-03 | 2018-12-03 | 19 |  |  | 2018-12-03 | 2018-12-03 | 0h |  |  |  |  |  |  |
| 21 | 4.4 | Проплата по договору | manual | 0.62d | 2018-12-04 | 2018-12-04 | 20 |  |  | 2018-12-04 | 2018-12-04 | 0.62d |  |  |  |  |  |  |
| 22 | 5 | **Договор об аренде презентационного оборудования** |  | 4d | 2018-12-05 | 2018-12-10 |  |  |  | 2018-12-05 | 2018-12-10 | 4d |  | 24h |  | 10,600 | 10,600 |  |
| 23 | 5.1 | Заключение договора с фирмой «Экраны и проекторы» | manual | 2d | 2018-12-04 | 2018-12-06 | 21 |  |  | 2018-12-04 | 2018-12-06 | 2d | Маринина В.И. | 16h |  | 400 | 400 |  |
| 24 | 5.2 | Проплата по договору | manual | 1d | 2018-12-06 | 2018-12-07 | 23 |  |  | 2018-12-06 | 2018-12-07 | 1d |  |  |  |  |  |  |
| 25 | 5.3 | Получение от фирмы «Экраны и проекторы» презентационного оборудования | manual | 1d | 2018-12-07 | 2018-12-10 | 24 |  |  | 2018-12-07 | 2018-12-10 | 1d | Иволгин А.М. [50%]; Маринина В.И. [50%] | 8h |  | 200 | 200 |  |

| ID | WBS | Task | Type | Duration | Start | Finish | Predecessors | Baseline start | Baseline finish | Baseline duration | Resources | Work | Cost | Baseline cost |
| --- | --- | --- | --- | --- | --- | --- | --- | --- | --- | --- | --- | --- | --- | --- |
| 26 | 6 | **Установка презентационного оборудования** |  | 3d | 2018-12-11 | 2018-12-13 |  | 2018-12-11 | 2018-12-13 | 3d |  | 48h | 1,200 | 1,200 |
| 27 | 6.1 | Обеспечение электропитания в актовом зале Университета | manual | 0.5d | 2018-12-10 | 2018-12-11 | 25 | 2018-12-10 | 2018-12-11 | 0.5d | Петров М.П.; Прохоров В.Я. | 8h | 200 | 200 |
| 28 | 6.2 | Монтирование сети в актовом зале | manual | 1d | 2018-12-11 | 2018-12-12 | 27 | 2018-12-11 | 2018-12-12 | 1d | Кабель [200 М]; Петров М.П.; Прохоров В.Я. | 16h | 400 | 400 |
| 29 | 6.3 | Установка экрана и проектора | manual | 0.5d | 2018-12-12 | 2018-12-12 | 28 | 2018-12-12 | 2018-12-12 | 0.5d | Петров М.П.; Прохоров В.Я. | 8h | 200 | 200 |
| 30 | 6.4 | Установка микрофонов | manual | 0.5d | 2018-12-12 | 2018-12-13 | 29 | 2018-12-12 | 2018-12-13 | 0.5d | Петров М.П.; Прохоров В.Я. | 8h | 200 | 200 |
| 31 | 6.5 | Установка компьютеров | manual | 0.5d | 2018-12-13 | 2018-12-13 | 30 | 2018-12-13 | 2018-12-13 | 0.5d | Петров М.П.; Прохоров В.Я. | 8h | 200 | 200 |
| 32 | 7 | **Организация питания участников** |  | 4.5d | 2018-12-14 | 2018-12-20 |  | 2018-12-14 | 2018-12-20 | 4.5d |  | 36h | 10,700 | 10,700 |
| 33 | 7.1 | Заключение договора с Кафе «Росинка» | manual | 2d | 2018-12-13 | 2018-12-17 | 31 | 2018-12-13 | 2018-12-17 | 2d | Маринина В.И. | 16h | 400 | 400 |
| 34 | 7.2 | Проплата по договору | manual | 1d | 2018-12-17 | 2018-12-18 | 33 | 2018-12-17 | 2018-12-18 | 1d | Маринина В.И. | 8h | 200 | 200 |
| 35 | 7.3 | Определение меню | manual | 0.5d | 2018-12-18 | 2018-12-19 | 34 | 2018-12-18 | 2018-12-19 | 0.5d | Маринина В.И. | 4h | 100 | 100 |
| 36 | 7.4 | Закупка продуктов | manual | 1d | 2018-12-19 | 2018-12-20 | 35 | 2018-12-19 | 2018-12-20 | 1d | Кафе "Росинка" | 8h | 10,000 | 10,000 |
| 37 | 8 | **Организация проживания иногородних участников** |  | 1.5d | 2018-12-20 | 2018-12-21 |  | 2018-12-20 | 2018-12-21 | 1.5d |  | 12h | 240 | 240 |
| 38 | 8.1 | Бронирование мест в гостинице | manual | 0.5d | 2018-12-20 | 2018-12-20 | 36 | 2018-12-20 | 2018-12-20 | 0.5d | Прохоренко М.И. | 4h | 80 | 80 |
| 39 | 8.2 | Оповещение иногородних участников о месте проживания | manual | 1d | 2018-12-20 | 2018-12-21 | 38 | 2018-12-20 | 2018-12-21 | 1d | Прохоренко М.И. | 8h | 160 | 160 |
| 40 | 9 | Конференция | manual | 2d | 2018-12-21 | 2018-12-25 | 39 | 2018-12-21 | 2018-12-25 | 2d |  |  |  |  |
| 41 | 10 | Демонтаж и возврат оборудования | manual | 1d | 2018-12-25 | 2018-12-26 | 40 | 2018-12-25 | 2018-12-26 | 1d | Иволгин А.М.; Петров М.П.; Прохоров В.Я. | 24h | 600 | 600 |
| 42 | 11 | Анализ отзывов и анкет участников | manual | 2d | 2018-12-26 | 2018-12-28 | 41 | 2018-12-26 | 2018-12-28 | 2d | Маринина В.И.; Самохвалов М.К. | 32h | 800 | 800 |
